Schedule from a web Gantt chart, 2022-07-12 to 2025-02-11.
Saturdays and Sundays are off

## Schedule

| ID | WBS | Task | Duration | Start | Finish | Predecessors | Complete | Status |
| --- | --- | --- | --- | --- | --- | --- | --- | --- |
| 2 | 1 | **Tasks Dependent on Function Team** | 404d | 2022-07-12 | 2024-01-26 |  |  |  |
| 3 | 1.1 | (eBao AA) Table Design of Customization | 20d | 2024-01-01 | 2024-01-26 |  |  |  |
| 4 | 1.2 | (eBao BA&AD) Code/Master Table Configuration | 1d | 2022-07-12 | 2022-07-12 |  |  |  |
| 5 | 1.3 | (User&eBao BA) Product Set-up | 1d | 2022-07-12 | 2022-07-12 |  |  |  |
| 6 | 1.4 | (User&eBao BA) Product Mappping | 1d | 2022-07-12 | 2022-07-12 |  |  |  |
| 7 | 1.5 | (eBao Tester) Function Test | 1d | 2022-07-12 | 2022-07-12 |  |  |  |
| 8 | 1.6 | (User) Function UAT | 1d | 2022-07-12 | 2022-07-12 |  |  |  |
| 9 | 2 | **Data Migration** | 672d | 2022-07-18 | 2025-02-11 |  | 3% |  |
| 10 | 2.1 | **DC Requirement Phase** | 20d | 2022-07-18 | 2022-08-12 |  | 75% |  |
| 11 | 2.1.1 | DC Approach/Scope/Plan | 5d | 2022-07-18 | 2022-07-22 |  | 100% | done |
| 12 | 2.1.2 | Baseline Template Introduction | 10d | 2022-07-25 | 2022-08-05 | 11 | 100% | done |
| 13 | 2.1.3 | DC Solution Doc | 4d | 2022-08-08 | 2022-08-11 | 12 |  |  |
| 14 | 2.1.4 | DC Approach and Scope Sign-Off | 1d | 2022-08-12 | 2022-08-12 | 13 |  | waiting |
| 15 | 2.2 | **DC Design Phase** | 40d | 2024-01-29 | 2024-03-22 |  |  | waiting |
| 16 | 2.2.1 | Design - Template & Mapping | 25d | 2024-01-29 | 2024-03-01 | 14, 3 |  | waiting |
| 17 | 2.2.2 | Design - Validation Rule & Reconciliation | 15d | 2024-03-04 | 2024-03-22 | 16 |  | waiting |
| 18 | 2.3 | **(Client IT & eBao DC) Staging Data Delivery and Validation** | 100d | 2022-08-08 | 2022-12-23 |  |  |  |
| 19 | 2.3.1 | First Time Delivery of All Staging Tables | 40d | 2022-08-08 | 2022-09-30 | 12 |  |  |
| 20 | 2.3.2 | Pass Rate of Staging Data > 60% | 20d | 2022-10-03 | 2022-10-28 | 19 |  | waiting |
| 21 | 2.3.3 | Pass Rate of Staging Data > 90% | 20d | 2022-10-31 | 2022-11-25 | 20 |  | waiting |
| 22 | 2.3.4 | Pass Rate of Staging Data = 100% | 20d | 2022-11-28 | 2022-12-23 | 21 |  | waiting |
| 23 | 2.4 | **DC Development Phase** | 65d | 2024-03-25 | 2024-06-21 |  |  |  |
| 24 | 2.4.1 | DC Development - Coversion Script | 30d | 2024-03-25 | 2024-05-03 | 17 |  | waiting |
| 25 | 2.4.2 | DC Development - Validation Rules | 10d | 2024-05-06 | 2024-05-17 | 24 |  | waiting |
| 26 | 2.4.3 | DC Development - Reconciliation | 10d | 2024-05-20 | 2024-05-31 | 25 |  | waiting |
| 27 | 2.4.4 | DC Development - Trial Run with Real Data | 35d | 2024-05-06 | 2024-06-21 | 24 |  | waiting |

| ID | WBS | Task | Duration | Start | Finish | Predecessors | Status |
| --- | --- | --- | --- | --- | --- | --- | --- |
| 28 | 2.5 | **DC Test - Internal** | 90d | 2024-05-20 | 2024-09-20 |  |  |
| 29 | 2.5.1 | Target Data Validation | 30d | 2024-05-20 | 2024-06-28 | 25 | waiting |
| 30 | 2.5.2 | Target Data Reconciliation | 30d | 2024-07-01 | 2024-08-09 | 29 | waiting |
| 31 | 2.5.3 | Recalculation Verification | 40d | 2024-05-20 | 2024-07-12 | 25 | waiting |
| 32 | 2.5.4 | Batch Jobs Running on Migrated Data | 20d | 2024-07-15 | 2024-08-09 | 31 | waiting |
| 33 | 2.5.5 | **Functional Test with Migrated Data** | 60d | 2024-07-01 | 2024-09-20 |  |  |
| 34 | 2.5.5.1 | Functional Test with Migrated Data (Pass Rate > 70%) | 30d | 2024-07-01 | 2024-08-09 | 29 | waiting |
| 35 | 2.5.5.2 | Functional Test with Migrated Data (Pass Rate > 85%) | 15d | 2024-08-12 | 2024-08-30 | 34 | waiting |
| 36 | 2.5.5.3 | Functional Test with Migrated Data (Pass Rate > 95%) | 15d | 2024-09-02 | 2024-09-20 | 35 | waiting |
| 37 | 2.6 | **DC Test - External (by Client)** | 90d | 2024-08-12 | 2024-12-13 |  |  |
| 38 | 2.6.1 | (Client BA) Comparison Check on UI | 30d | 2024-08-12 | 2024-09-20 | 34 | waiting |
| 39 | 2.6.2 | (Client BA/IT) Pre DC UAT | 30d | 2024-08-12 | 2024-09-20 | 34 | waiting |
| 40 | 2.6.3 | (Client User) DC UAT | 60d | 2024-09-23 | 2024-12-13 | 36, 39 | waiting |
| 41 | 2.7 | **Go Live** | 14d | 2024-12-12 | 2024-12-31 |  |  |
| 42 | 2.7.1 | Rehearsal for CutOver | 12d | 2024-12-12 | 2024-12-27 | 40FS-2d | suspended |
| 43 | 2.7.2 | CutOver | 2d | 2024-12-30 | 2024-12-31 | 42 | suspended |
| 44 | 2.8 | Post-Go-Live Support | 30d | 2025-01-01 | 2025-02-11 | 43 | suspended |
